# FCMP++/Carrot Plan

How a schedule from Planner changed from version to version. A marks actual dates.

## Version 1 (saved 2026-07-22)

Note of the change: initial plan

| ID | Task | Duration | Start | Finish | Predecessors | Constraint |
| --- | --- | --- | --- | --- | --- | --- |
| 1 | Circuit + Gadget Library Audit | 20d | 2026-07-29 | 2026-08-25 |  | start no earlier than 2026-07-29 |
| 2 | FCMP++ Phase 2 audit | 20d | 2026-07-29 | 2026-08-25 |  | start no earlier than 2026-07-29 |
| 3 | FCMP++ Phase 3 audit | 20d | 2026-08-26 | 2026-09-22 | 2 |  |
| 4 | FCMP++ further integretion audit? | 40d | 2026-08-26 | 2026-10-20 | 1 |  |
| 5 | FCMP++ Phase 1b merges | 4.75d | 2026-07-22 | 2026-07-28 |  |  |
| 6 | FCMP++ Phase 2 merges | 10d | 2026-07-28 | 2026-08-11 | 5 |  |
| 7 | FCMP++ Phase 3 merges | 5d | 2026-08-11 | 2026-08-18 | 6 |  |
| 8 | mx25519 merge | 5d | 2026-07-22 | 2026-07-28 |  |  |
| 9 | carrot_core merge | 5d | 2026-07-29 | 2026-08-04 | 8 |  |
| 10 | carrot_impl merge | 5d | 2026-08-05 | 2026-08-11 | 9 |  |
| 11 | carrot-fcmp integration merges | 5d | 2026-08-12 | 2026-08-18 | 10 |  |
| 12 | RandomX v2 + intermediate merge | 5d | 2026-07-22 | 2026-07-28 |  |  |
| 13 | TX relay v2 double-spend debug | 5d | 2026-07-22 | 2026-07-28 |  |  |
| 14 | TX relay v2 merge | 10d | 2026-07-29 | 2026-08-11 | 13 |  |
| 15 | HF activation merge | 1d | 2026-08-19 | 2026-08-19 | 14, 12, 11, 7 |  |
| 16 | Pre-release code freeze | 20d | 2026-08-20 | 2026-09-16 | 15 |  |
| 17 | First HF-enabled binary release | 5d | 2026-09-17 | 2026-09-23 | 16, 15 |  |
| 18 | HF mandatory waiting period | 120d | 2026-09-17 | 2027-03-03 | 16, 15 |  |
| 19 | Circuit + Gadget follow-up dev | 10d | 2026-08-26 | 2026-09-08 | 1 |  |
| 20 | FCMP++ integration follow-up dev | 10d | 2026-10-21 | 2026-11-03 | 3, 4, 19 |  |
| 21 | Pre-activation code freeze | 60d | 2026-11-04 | 2027-01-26 | 20 |  |
| 22 | Follow-up fix binary release | 5d | 2026-11-04 | 2026-11-10 | 20 |  |
| 23 | FCMP++ activation | 1d | 2027-03-04 | 2027-03-04 | 21, 18 |  |

## Version 2 (saved 2026-07-22)

Note of the change: Add side feature development

Last finish stays 2027-03-04.

Added:

| ID | Task | Duration | Start | Finish | Predecessors |
| --- | --- | --- | --- | --- | --- |
| 22 | Trezor HW dev | 90d | 2026-07-22 | 2026-11-24 |  |
| 23 | Trezor HW merges | 5d | 2026-11-25 | 2026-12-01 | 22 |
| 24 | Ledger HW dev | 90d | 2026-07-22 | 2026-11-24 |  |
| 25 | Ledger HW merges | 5d | 2026-11-25 | 2026-12-01 | 24 |
| 26 | Multisig dev | 45d | 2026-07-22 | 2026-09-22 |  |
| 27 | Multisig merges | 1d | 2026-09-23 | 2026-09-23 | 26 |
| 28 | Hot-cold dev | 5d | 2026-07-22 | 2026-07-28 |  |
| 29 | Hot-cold merges | 5d | 2026-07-29 | 2026-08-04 | 28 |
| 30 | Wallet knowledge dev | 5d | 2026-07-29 | 2026-08-04 | 28 |
| 31 | Wallet knowledge merges | 5d | 2026-08-05 | 2026-08-11 | 30 |
| 32 | Fully-featured merge | 1d | 2026-12-02 | 2026-12-02 | 20, 31, 29, 15, 27, 25, 23 |
| 33 | Fully-featured binary release | 5d | 2026-12-03 | 2026-12-09 | 32 |

Changed:

| ID | Task | Start | Finish | Predecessors |
| --- | --- | --- | --- | --- |
| 34 | Pre-activation code freeze | 2026-11-04 → 2026-12-03 (+29d) | 2027-01-26 → 2027-02-24 (+29d) | 20 → 32 |

## Version 3 (saved 2026-07-24)

Note of the change: breakdown FCMP++ phase 2

Last finish stays 2027-03-04.

Added:

| ID | Task | Duration | Start | Finish | Predecessors | Constraint |
| --- | --- | --- | --- | --- | --- | --- |
| 7 | Tower cycle and hash_grow | 3d | 2026-07-31 | 2026-08-04 | 6 |  |
| 8 | point_to_cycle_scalar | 2d | 2026-08-05 | 2026-08-06 | 7 |  |
| 9 | get_tree_extension | 3d | 2026-08-07 | 2026-08-11 | 8 |  |
| 11 | mx25519 unclamped + other PRs | 2d | 2026-07-22 | 2026-07-23 |  |  |
| 12 | Generator T,U,V fix merges | 1d | 2026-07-23 | 2026-07-23 |  | start no earlier than 2026-07-23 |
| 15 | UkoeHB's carrot_impl review | 2d | 2026-07-22 | 2026-07-23 |  |  |
| 21 | guix: add rust | 5d | 2026-07-22 | 2026-07-28 |  |  |
| 22 | guix: bootstapple FCMP++ | 5d | 2026-07-29 | 2026-08-04 | 21 |  |

Changed:

| ID | Task | Start | Finish | Duration | Complete | Predecessors | Other |
| --- | --- | --- | --- | --- | --- | --- | --- |
| 5 | FFI and selene_scalar_from_bytes | 2026-07-22 → 2026-07-24 (+2d) | 2026-07-28 → 2026-07-27 (-1d) | 4.75d → 2d |  |  | was named FCMP++ Phase 1b merges; constraint none → start no earlier than 2026-07-24 |
| 6 | Curve trees and outputs -> leaves |  | 2026-08-11 → 2026-07-30 (-12d) | 10d → 3d |  |  | was named FCMP++ Phase 2 merges |
| 10 | FCMP++ Phase 3 merges | 2026-08-11 → 2026-08-12 (+1d) |  |  |  | 6 → 9 |  |
| 13 | mx25519 merge | 2026-07-22 → 2026-07-24 (+2d) |  | 5d → 3d |  | none → 11 |  |
| 14 | carrot_core merge |  |  |  |  | 13 → 12, 13 |  |
| 16 | carrot_impl merge |  |  |  |  | 14 → 15, 14 |  |
| 23 | HF activation merge |  |  |  | 0% → 22% | 20, 18, 17, 10 → 22, 20, 18, 17, 10 |  |

## Version 4 (saved 2026-07-27)

Note of the change: Moved 6-month wait dep b/c of today's NWLB discussions

Last finish 2027-03-04 → 2027-02-04 (-28d).

Changed:

| ID | Task | Start | Finish | Duration | Complete | Predecessors | Other |
| --- | --- | --- | --- | --- | --- | --- | --- |
| 12 | Generator T,U,V fix merges | 2026-07-23 → 2026-07-27 (+4d) | 2026-07-23 → 2026-07-27 (+4d) | 1d → 0.78d | 29% → 14% |  | constraint start no earlier than 2026-07-23 → start no earlier than 2026-07-27 |
| 15 | UkoeHB's carrot_impl review | 2026-07-22 → 2026-07-27 (+5d) | 2026-07-23 → 2026-07-28 (+5d) |  |  |  | constraint none → start no earlier than 2026-07-27 |
| 26 | HF mandatory waiting period | 2026-09-17 → 2026-08-20 (-28d) | 2027-03-03 → 2027-02-03 (-28d) |  |  | 24, 23 → 23 |  |
| 42 | Pre-activation code freeze |  | 2027-02-24 → 2027-01-27 (-28d) | 60d → 40d |  |  |  |
| 43 | FCMP++ activation | 2027-03-04 → 2027-02-04 (-28d) | 2027-03-04 → 2027-02-04 (-28d) |  |  |  |  |

## Version 5 (saved 2026-07-28)

Last finish 2027-02-04 → 2027-02-05 (+1d). Complete tasks 0 → 2.

Added:

| ID | Task | Duration | Start | Finish | Constraint |
| --- | --- | --- | --- | --- | --- |
| 16 | tests_common library | 1d | 2026-07-28 | 2026-07-28 | start no earlier than 2026-07-28 |

Changed:

| ID | Task | Start | Finish | Duration | Complete | Predecessors |
| --- | --- | --- | --- | --- | --- | --- |
| 5 | FFI and selene_scalar_from_bytes |  | 2026-07-27 → 2026-07-28 (+1d) | 2d → 3d |  |  |
| 6 | Curve trees and outputs -> leaves | 2026-07-28 → 2026-07-29 (+1d) | 2026-07-30 → 2026-07-31 (+1d) |  |  |  |
| 7 | Tower cycle and hash_grow | 2026-07-31 → 2026-08-03 (+3d) | 2026-08-04 → 2026-08-05 (+1d) |  |  |  |
| 8 | point_to_cycle_scalar | 2026-08-05 → 2026-08-06 (+1d) | 2026-08-06 → 2026-08-07 (+1d) |  |  |  |
| 9 | get_tree_extension | 2026-08-07 → 2026-08-10 (+3d) | 2026-08-11 → 2026-08-12 (+1d) |  |  |  |
| 10 | FCMP++ Phase 3 merges | 2026-08-12 → 2026-08-13 (+1d) | 2026-08-18 → 2026-08-19 (+1d) |  |  |  |
| 11 | mx25519 unclamped + other PRs |  |  |  | 0% → 100% |  |
| 15 | UkoeHB's carrot_impl review |  |  |  | 0% → 100% |  |
| 17 | carrot_impl merge |  |  |  |  | 15, 14 → 16, 15, 14 |
| 24 | HF activation merge | 2026-08-19 → 2026-08-20 (+1d) | 2026-08-19 → 2026-08-20 (+1d) |  |  |  |
| 25 | Pre-release code freeze | 2026-08-20 → 2026-08-21 (+1d) | 2026-09-16 → 2026-09-17 (+1d) |  |  |  |
| 26 | First HF-enabled binary release | 2026-09-17 → 2026-09-18 (+1d) | 2026-09-23 → 2026-09-24 (+1d) |  |  |  |
| 27 | HF mandatory waiting period | 2026-08-20 → 2026-08-21 (+1d) | 2027-02-03 → 2027-02-04 (+1d) |  |  |  |
| 44 | FCMP++ activation | 2027-02-04 → 2027-02-05 (+1d) | 2027-02-04 → 2027-02-05 (+1d) |  |  |  |

## Version 6 (saved 2026-07-29)

Last finish stays 2027-02-05.

Added:

| ID | Task | Duration | Start | Finish | Constraint |
| --- | --- | --- | --- | --- | --- |
| 18 | wallet: upstream misc stuff before FCMP++ | 1d | 2026-07-28 | 2026-07-28 | start no earlier than 2026-07-28 |

Changed:

| ID | Task | Complete | Predecessors |
| --- | --- | --- | --- |
| 16 | tests_common library | 0% → 23% |  |
| 19 | carrot-fcmp integration merges |  | 17 → 18, 17 |

## Version 7 (saved 2026-08-12)

Note of the change: Push back undone tasks

Last finish 2027-02-05 → 2027-02-23 (+18d). Complete tasks 2 → 3.

Changed:

| ID | Task | Start | Finish | Complete | Other |
| --- | --- | --- | --- | --- | --- |
| 5 | FFI and selene_scalar_from_bytes |  |  | 0% → 100% |  |
| 6 | Curve trees and outputs -> leaves | 2026-07-29 → 2026-08-12 (+14d) | 2026-07-31 → 2026-08-14 (+14d) |  | constraint none → start no earlier than 2026-08-12 |
| 7 | Tower cycle and hash_grow | 2026-08-03 → 2026-08-17 (+14d) | 2026-08-05 → 2026-08-19 (+14d) |  |  |
| 8 | point_to_cycle_scalar | 2026-08-06 → 2026-08-20 (+14d) | 2026-08-07 → 2026-08-21 (+14d) |  |  |
| 9 | get_tree_extension | 2026-08-10 → 2026-08-24 (+14d) | 2026-08-12 → 2026-08-26 (+14d) |  |  |
| 10 | FCMP++ Phase 3 merges | 2026-08-13 → 2026-08-27 (+14d) | 2026-08-19 → 2026-09-02 (+14d) |  |  |
| 12 | Generator T,U,V fix merges | 2026-07-27 → 2026-08-12 (+16d) | 2026-07-27 → 2026-08-12 (+16d) |  | constraint start no earlier than 2026-07-27 → start no earlier than 2026-08-12 |
| 13 | mx25519 merge | 2026-07-24 → 2026-08-12 (+19d) | 2026-07-28 → 2026-08-14 (+17d) |  | constraint none → start no earlier than 2026-08-12 |
| 14 | carrot_core merge | 2026-07-29 → 2026-08-17 (+19d) | 2026-08-04 → 2026-08-21 (+17d) |  |  |
| 17 | carrot_impl merge | 2026-08-05 → 2026-08-24 (+19d) | 2026-08-11 → 2026-08-28 (+17d) |  |  |
| 18 | wallet: upstream misc stuff before FCMP++ | 2026-07-28 → 2026-08-12 (+15d) | 2026-07-28 → 2026-08-12 (+15d) |  | constraint start no earlier than 2026-07-28 → start no earlier than 2026-08-12 |
| 19 | carrot-fcmp integration merges | 2026-08-12 → 2026-08-31 (+19d) | 2026-08-18 → 2026-09-04 (+17d) |  |  |
| 25 | HF activation merge | 2026-08-20 → 2026-09-07 (+18d) | 2026-08-20 → 2026-09-07 (+18d) |  |  |
| 26 | Pre-release code freeze | 2026-08-21 → 2026-09-08 (+18d) | 2026-09-17 → 2026-10-05 (+18d) |  |  |
| 27 | First HF-enabled binary release | 2026-09-18 → 2026-10-06 (+18d) | 2026-09-24 → 2026-10-12 (+18d) |  |  |
| 28 | HF mandatory waiting period | 2026-08-21 → 2026-09-08 (+18d) | 2027-02-04 → 2027-02-22 (+18d) |  |  |
| 45 | FCMP++ activation | 2027-02-05 → 2027-02-23 (+18d) | 2027-02-05 → 2027-02-23 (+18d) |  |  |

## Version 8 (saved 2026-08-21)

Note of the change: morning 8/21/26

Last finish 2027-02-23 → 2027-03-04 (+9d). Complete tasks 3 → 8.

Changed:

| ID | Task | Start | Finish | Complete | Other |
| --- | --- | --- | --- | --- | --- |
| 6 | Curve trees and outputs -> leaves |  |  | 0% → 100% |  |
| 7 | Tower cycle and hash_grow | 2026-08-17 → 2026-08-21 (+4d) | 2026-08-19 → 2026-08-25 (+6d) |  | constraint none → start no earlier than 2026-08-21 |
| 8 | point_to_cycle_scalar | 2026-08-20 → 2026-08-26 (+6d) | 2026-08-21 → 2026-08-27 (+6d) |  |  |
| 9 | get_tree_extension | 2026-08-24 → 2026-08-28 (+4d) | 2026-08-26 → 2026-09-01 (+6d) |  |  |
| 10 | FCMP++ Phase 3 merges | 2026-08-27 → 2026-09-02 (+6d) | 2026-09-02 → 2026-09-08 (+6d) |  |  |
| 12 | Generator T,U,V fix merges |  |  | 14% → 100% |  |
| 13 | mx25519 merge | 2026-08-12 → 2026-08-21 (+9d) | 2026-08-14 → 2026-08-25 (+11d) |  | constraint start no earlier than 2026-08-12 → start no earlier than 2026-08-21 |
| 14 | carrot_core merge | 2026-08-17 → 2026-08-26 (+9d) | 2026-08-21 → 2026-09-01 (+11d) |  |  |
| 16 | tests_common library |  |  | 23% → 34% |  |
| 17 | carrot_impl merge | 2026-08-24 → 2026-09-02 (+9d) | 2026-08-28 → 2026-09-08 (+11d) |  |  |
| 19 | carrot-fcmp integration merges | 2026-08-31 → 2026-09-09 (+9d) | 2026-09-04 → 2026-09-15 (+11d) |  |  |
| 21 | TX relay v2 double-spend debug |  |  | 0% → 100% |  |
| 23 | guix: add rust |  |  | 0% → 100% |  |
| 24 | guix: bootstapple FCMP++ |  |  | 0% → 100% |  |
| 25 | HF activation merge | 2026-09-07 → 2026-09-16 (+9d) | 2026-09-07 → 2026-09-16 (+9d) |  |  |
| 26 | Pre-release code freeze | 2026-09-08 → 2026-09-17 (+9d) | 2026-10-05 → 2026-10-14 (+9d) |  |  |
| 27 | First HF-enabled binary release | 2026-10-06 → 2026-10-15 (+9d) | 2026-10-12 → 2026-10-21 (+9d) |  |  |
| 28 | HF mandatory waiting period | 2026-09-08 → 2026-09-17 (+9d) | 2027-02-22 → 2027-03-03 (+9d) |  |  |
| 45 | FCMP++ activation | 2027-02-23 → 2027-03-04 (+9d) | 2027-02-23 → 2027-03-04 (+9d) |  |  |

## Version 9 (saved 2026-10-07)

Note of the change: Add FCMP++ phase 3 PRs, push back mx25519

Last finish 2027-03-04 → 2027-04-20 (+47d). Complete tasks 8 → 11.

Added:

| ID | Task | Duration | Start | Finish | Predecessors |
| --- | --- | --- | --- | --- | --- |
| 11 | tree building DB integration | 3d | 2026-09-02 | 2026-09-04 | 9 |
| 12 | Consensus verification integration | 0d | 2026-10-08 | 2026-10-08 | 11, 10, 9 |
| 13 | FCMP++ Phase 3 misc merges | 1d | 2026-10-08 | 2026-10-08 | 12, 11, 10, 9 |

Changed:

| ID | Task | Start | Finish | Duration | Complete | Predecessors | Other |
| --- | --- | --- | --- | --- | --- | --- | --- |
| 7 | Tower cycle and hash_grow |  |  |  | 0% → 100% |  |  |
| 8 | point_to_cycle_scalar |  |  |  | 0% → 100% |  |  |
| 9 | get_tree_extension |  |  |  | 0% → 100% |  |  |
| 10 | verify FCMP++ proofs tooling - #11407 | 2026-09-02 → 2026-10-07 (+35d) | 2026-09-08 → 2026-10-07 (+29d) | 5d → 1d |  |  | was named FCMP++ Phase 3 merges; constraint none → start no earlier than 2026-10-07 |
| 16 | mx25519 merge | 2026-08-21 → 2026-10-07 (+47d) | 2026-08-25 → 2026-10-09 (+45d) |  |  |  | constraint start no earlier than 2026-08-21 → start no earlier than 2026-10-07 |
| 17 | carrot_core merge | 2026-08-26 → 2026-10-12 (+47d) | 2026-09-01 → 2026-10-16 (+45d) |  |  |  |  |
| 19 | tests_common library | 2026-07-28 → 2026-10-07 (+71d) | 2026-07-28 → 2026-10-07 (+71d) |  |  |  | constraint start no earlier than 2026-07-28 → start no earlier than 2026-10-07 |
| 20 | carrot_impl merge | 2026-09-02 → 2026-10-19 (+47d) | 2026-09-08 → 2026-10-23 (+45d) |  |  |  |  |
| 22 | carrot-fcmp integration merges | 2026-09-09 → 2026-10-26 (+47d) | 2026-09-15 → 2026-10-30 (+45d) |  |  |  |  |
| 25 | TX relay v2 merge | 2026-07-29 → 2026-10-07 (+70d) | 2026-08-11 → 2026-10-20 (+70d) |  |  |  | constraint none → start no earlier than 2026-10-07 |
| 28 | HF activation merge | 2026-09-16 → 2026-11-02 (+47d) | 2026-09-16 → 2026-11-02 (+47d) |  |  | 27, 25, 23, 22, 10 → 27, 25, 23, 22, 13 |  |
| 29 | Pre-release code freeze | 2026-09-17 → 2026-11-03 (+47d) | 2026-10-14 → 2026-11-30 (+47d) |  |  |  |  |
| 30 | First HF-enabled binary release | 2026-10-15 → 2026-12-01 (+47d) | 2026-10-21 → 2026-12-07 (+47d) |  |  |  |  |
| 31 | HF mandatory waiting period | 2026-09-17 → 2026-11-03 (+47d) | 2027-03-03 → 2027-04-19 (+47d) |  |  |  |  |
| 48 | FCMP++ activation | 2027-03-04 → 2027-04-20 (+47d) | 2027-03-04 → 2027-04-20 (+47d) |  |  |  |  |

## Version 10 (saved 2026-10-14)

Note of the change: push back mx25519

Last finish 2027-04-20 → 2027-04-27 (+7d).

Changed:

| ID | Task | Start | Finish | Other |
| --- | --- | --- | --- | --- |
| 16 | mx25519 merge | 2026-10-07 → 2026-10-14 (+7d) | 2026-10-09 → 2026-10-16 (+7d) | constraint start no earlier than 2026-10-07 → start no earlier than 2026-10-14 |
| 17 | carrot_core merge | 2026-10-12 → 2026-10-19 (+7d) | 2026-10-16 → 2026-10-23 (+7d) |  |
| 20 | carrot_impl merge | 2026-10-19 → 2026-10-26 (+7d) | 2026-10-23 → 2026-10-30 (+7d) |  |
| 22 | carrot-fcmp integration merges | 2026-10-26 → 2026-11-02 (+7d) | 2026-10-30 → 2026-11-06 (+7d) |  |
| 28 | HF activation merge | 2026-11-02 → 2026-11-09 (+7d) | 2026-11-02 → 2026-11-09 (+7d) |  |
| 29 | Pre-release code freeze | 2026-11-03 → 2026-11-10 (+7d) | 2026-11-30 → 2026-12-07 (+7d) |  |
| 30 | First HF-enabled binary release | 2026-12-01 → 2026-12-08 (+7d) | 2026-12-07 → 2026-12-14 (+7d) |  |
| 31 | HF mandatory waiting period | 2026-11-03 → 2026-11-10 (+7d) | 2027-04-19 → 2027-04-26 (+7d) |  |
| 48 | FCMP++ activation | 2027-04-20 → 2027-04-27 (+7d) | 2027-04-20 → 2027-04-27 (+7d) |  |

## Version 11 (saved 2026-10-19)

Note of the change: finish mx25519 merge

Last finish stays 2027-04-27. Complete tasks 11 → 12.

Changed:

| ID | Task | Start | Finish | Complete | Other |
| --- | --- | --- | --- | --- | --- |
| 16 | mx25519 merge |  |  | 0% → 100% |  |
| 19 | tests_common library | 2026-10-07 → 2026-10-19 (+12d) | 2026-10-07 → 2026-10-19 (+12d) | 34% → 28% | constraint start no earlier than 2026-10-07 → start no earlier than 2026-10-19 |
| 23 | RandomX v2 + intermediate merge | 2026-07-22 → 2026-10-19 (+89d) | 2026-07-28 → 2026-10-23 (+87d) |  | constraint none → start no earlier than 2026-10-19 |
